# gpp20112

How a schedule from MS Project changed from version to version. A marks actual dates.

## Version 1 (saved 2011-09-05, file DPEAP_CRN_20110904.mpp)

Note of the change: Criação da Branch 1.1.1

| ID | WBS | Task | Duration | Start | Finish |
| --- | --- | --- | --- | --- | --- |
| 1 | 1 | **Projto de GPP** | 86d | 2011-08-22 | 2011-12-19 |
| 2 | 1.1 | **Inciação** | 28d | 2011-08-22 | 2011-09-28 |
| 3 | 1.1.1 | **I1** | 14d | 2011-08-22 | 2011-09-08 |
| 4 |  | Estudo Inicial | 4d | 2011-08-22 | 2011-08-25 |
| 5 |  | Primeira reunião | 1d | 2011-08-25 | 2011-08-25 |
| 6 |  | Estudo Inicial de requisitos | 2d | 2011-08-25 | 2011-08-26 |
| 7 |  | Definição do problema | 2d | 2011-08-26 | 2011-08-29 |
| 8 |  | Elaborar EAP | 2d | 2011-08-29 | 2011-08-30 |
| 9 |  | Elaborar termo de abertura básico | 8d | 2011-08-29 | 2011-09-07 |
| 10 | 1.1.2 | **I2** | 14d | 2011-09-08 | 2011-09-27 |
| 11 |  | Segunda reunião | 1d | 2011-09-08 | 2011-09-08 |
| 12 |  | Definir riscos | 3d | 2011-09-09 | 2011-09-13 |
| 13 |  | Definir requisitos | 3d | 2011-09-14 | 2011-09-16 |
| 14 |  | Elaborar Documento de arquitetura | 8d | 2011-09-17 | 2011-09-27 |
| 15 | 1.2 | **Elaboração** | 18d | 2011-09-29 | 2011-10-24 |
| 16 | 1.2.1 | **E1** | 10d | 2011-09-29 | 2011-10-12 |
| 17 |  | Terceira reunião | 1d | 2011-09-29 | 2011-09-29 |
| 18 |  | Refinar requisitos | 2d | 2011-09-30 | 2011-10-03 |
| 19 |  | Elaborar diagrama de casos de uso inicial | 2d | 2011-10-04 | 2011-10-05 |
| 20 |  | Elaborar documento de visão | 6d | 2011-10-05 | 2011-10-12 |
| 21 | 1.2.2 | **E2** | 7d | 2011-10-13 | 2011-10-21 |
| 22 |  | Quarta reunião | 1d | 2011-10-13 | 2011-10-13 |
| 23 |  | Implementar componentes | 2d | 2011-10-13 | 2011-10-14 |
| 24 |  | Refinamento de requisitos | 2d | 2011-10-15 | 2011-10-17 |
| 25 |  | Teste | 3d | 2011-10-17 | 2011-10-19 |
| 26 |  | Entrega do build 1 | 1d | 2011-10-20 | 2011-10-20 |
| 27 |  | Gerar relatorio de retrospectiva | 1d | 2011-10-21 | 2011-10-21 |
| 28 | 1.3 | **Construção** | 21d | 2011-10-21 | 2011-11-18 |
| 29 | 1.3.3 | **C1** | 7d | 2011-10-21 | 2011-10-31 |
| 30 |  | Quinta reunião | 2d | 2011-10-21 | 2011-10-24 |
| 31 |  | Implementar componentes da iteração | 3d | 2011-10-24 | 2011-10-26 |
| 32 |  | Teste | 2d | 2011-10-26 | 2011-10-27 |
| 33 |  | Feedback do cliente | 1d | 2011-10-27 | 2011-10-27 |
| 34 |  | Entrega do build 2 | 3d | 2011-10-27 | 2011-10-31 |
| 35 | 1.3.4 | **C2** | 7d | 2011-10-31 | 2011-11-08 |
| 36 |  | Refinamento de requisitos | 3d | 2011-10-31 | 2011-11-02 |
| 37 |  | Integrar sub-sistemas | 3d | 2011-11-03 | 2011-11-07 |
| 38 |  | Testar e avaliar | 1d | 2011-11-07 | 2011-11-07 |
| 39 |  | Entrega do build 3 | 1d | 2011-11-08 | 2011-11-08 |
| 40 | 1.3.5 | **C3** | 7d | 2011-11-08 | 2011-11-16 |
| 41 |  | Feedbak do cliente | 3d | 2011-11-08 | 2011-11-10 |
| 42 |  | Implmentar requisitos | 2d | 2011-11-10 | 2011-11-11 |
| 43 |  | Testes | 1d | 2011-11-12 | 2011-11-12 |
| 44 |  | Entrega do build 4 | 1d | 2011-11-13 | 2011-11-13 |
| 45 | 1.4 | **Transição** | 21d | 2011-11-18 | 2011-12-16 |
| 46 | 1.4.5 | **T1** | 21d | 2011-11-18 | 2011-12-16 |
| 47 |  | Desenvolver material de suporte | 7d | 2011-11-18 | 2011-11-28 |
| 48 |  | Gerenciar teste de aceitação | 4d | 2011-11-28 | 2011-12-01 |
| 49 |  | Correção de erros | 7d | 2011-12-01 | 2011-12-09 |
| 50 |  | Entrega da release do projeto | 5d | 2011-12-09 | 2011-12-15 |

## Version 2 (saved 2011-09-09, file gpp20112-V2.mpp)

Note of the change: Criação da Branch 1.1.1

Last finish stays 2011-12-19.

Changed:

| ID | Task | Other |
| --- | --- | --- |
| 1 | **Projeto de GPP** | was named Projto de GPP |
| 12 | Levantamento riscos | was named Definir riscos |
| 24 | Implementar componentes (Modulo WBS) | was named Implementar componentes |
| 26 | Entrega do build 1 - definir modulo WBS | was named Entrega do build 1 |
| 34 | Entrega do build 2 - integrar modulo wbs com o modulo do projeto | was named Entrega do build 2 |
| 39 | Entrega do build 3 - definir e implemetar a interface da WBS | was named Entrega do build 3 |
| 44 | Entrega do build 4 - Acoplamento das builds | was named Entrega do build 4 |
| 50 | Entrega da release do projeto - Gerar WBS | was named Entrega da release do projeto |

## Version 3 (saved 2011-09-26, file gpp20112-V3.mpp)

Note of the change: Criação da Branch 1.1.1

Last finish stays 2011-12-19.

Added:

| ID | Task | Duration | Start | Finish |
| --- | --- | --- | --- | --- |
| 9 | Elaborar Cronograma inicial | 2d | 2011-08-29 | 2011-08-30 |
| 11 | Definir gerência de configuração | 2d | 2011-08-29 | 2011-08-30 |
| 16 | Definir arquitetura inicial | 8d | 2011-09-17 | 2011-09-27 |
| 17 | Levantar orçamento inicial | 8d | 2011-09-17 | 2011-09-27 |
| 18 | Definir artefatos | 8d | 2011-09-17 | 2011-09-27 |
| 19 | Levantar ferramentas | 8d | 2011-09-17 | 2011-09-27 |
| 25 | Elaborar documento de arquitetura | 6d | 2011-10-05 | 2011-10-12 |

Removed: 14 Elaborar Documento de arquitetura

## Version 4 (saved 2011-10-16, file DPEAP_CRN_20110904_V2.9.mpp)

Note of the change: Criação da Branch 1.1.1

Last finish stays 2011-12-19. Complete tasks 0 → 25.

Added:

| ID | Task | Duration | Start | Finish | Predecessors | Resources |
| --- | --- | --- | --- | --- | --- | --- |
| 15 | Definir requisitos (Funcionais) | 3d | 2011-09-14 A | 2011-09-19 A | 14 | Rafael Queiroz; Vinicius Vieira |
| 31 | Entrega do termo de abertura básico | 0d | 2011-10-11 A | 2011-10-11 A | 30 | Guilherme Fay |

Changed:

| ID | Task | Start | Finish | Duration | Complete | Total float | Predecessors | Other |
| --- | --- | --- | --- | --- | --- | --- | --- | --- |
| 1 | **Projeto de GPP** | 2011-08-22 A |  |  | 0% → 49% |  |  | resources none → Compra de computador [800%]; Equipamento de rede; Resma de papel [200%]; Servidor; Licença MS Project [800%]; Licenças Office [800%] |
| 2 | **Inciação** | 2011-08-22 A | 2011-09-28 A | 28d → 27.5d | 0% → 100% |  |  |  |
| 3 | **I1** | 2011-08-22 A | 2011-09-08 → 2011-09-07 A (-1d) | 14d → 13d | 0% → 100% |  |  |  |
| 4 | Estudo Inicial | 2011-08-22 A | 2011-08-25 A |  | 0% → 100% |  |  |  |
| 5 | Primeira reunião | 2011-08-25 → 2011-08-26 A (+1d) | 2011-08-25 → 2011-08-26 A (+1d) |  | 0% → 100% |  | none → 4 | resources none → Filipe Barbosa; Guilherme Fay; Renan Figueiras; Jose Guimarães |
| 6 | Definição do problema | 2011-08-26 A | 2011-08-29 → 2011-08-26 A (-3d) | 2d → 1d | 0% → 100% |  | none → 4 | resources none → Filipe Barbosa; GuilhermeCalixto; Jose Guimarães; Rafael Queiroz; Renan Figueiras; Vinicius Vieira |
| 7 | Estudo Inicial de requisitos | 2011-08-25 → 2011-08-29 A (+4d) | 2011-08-26 → 2011-08-30 A (+4d) |  | 0% → 100% |  | none → 5 | resources none → Rafael Queiroz; Vinicius Vieira |
| 8 | Elaborar EAP | 2011-08-29 A | 2011-08-30 A |  | 0% → 100% |  | none → 5 | resources none → Guilherme Fay; Renan Figueiras; Jose Guimarães |
| 9 | Elaborar Cronograma inicial | 2011-08-29 → 2011-08-31 A (+2d) | 2011-08-30 → 2011-09-01 A (+2d) |  | 0% → 100% |  | none → 8 | resources none → Jose Guimarães; Guilherme Fay; Renan Figueiras |
| 10 | Elaborar termo de abertura básico | 2011-08-29 → 2011-08-31 A (+2d) | 2011-09-07 A | 8d → 6d | 0% → 100% |  | none → 7 | resources none → Filipe Barbosa; GuilhermeCalixto; Guilherme Fay; Renan Figueiras; Jose Guimarães; Rafael Queiroz; Vinicius Vieira |
| 11 | Definir gerência de configuração | 2011-08-29 A | 2011-08-30 A |  | 0% → 100% |  | none → 5 | resources none → Guilherme Fay; Jose Guimarães |
| 12 | **I2** | 2011-09-08 → 2011-09-09 A (+1d) | 2011-09-27 → 2011-09-28 A (+1d) | 14d → 13.5d | 0% → 100% |  | none → 3 |  |
| 13 | Segunda reunião | 2011-09-08 → 2011-09-09 A (+1d) | 2011-09-08 → 2011-09-09 A (+1d) |  | 0% → 100% |  |  | resources none → Filipe Barbosa; Jose Guimarães |
| 14 | Levantamento riscos | 2011-09-09 A | 2011-09-13 → 2011-09-14 A (+1d) |  | 0% → 100% |  | none → 13 | resources none → Henrique Pereira; Vinicius Vieira; Rafael Queiroz |
| 16 | Definir requisitos (Nao Funcionais) | 2011-09-14 A | 2011-09-16 A | 3d → 1d | 0% → 100% |  | none → 14 | was named Definir requisitos; resources none → Henrique Pereira |
| 17 | Definir arquitetura inicial | 2011-09-17 → 2011-09-19 A (+2d) | 2011-09-27 → 2011-09-21 A (-6d) | 8d → 1d | 0% → 100% |  | none → 15 | resources none → Rafael Queiroz; Henrique Pereira |
| 18 | Levantar orçamento inicial | 2011-09-17 → 2011-09-19 A (+2d) | 2011-09-27 → 2011-09-28 A (+1d) | 8d → 4d | 0% → 100% |  | none → 15 | resources none → Guilherme Fay; Jose Guimarães; Filipe Barbosa |
| 19 | Definir artefatos | 2011-09-17 → 2011-09-19 A (+2d) | 2011-09-27 A | 8d → 2d | 0% → 100% |  | none → 15 | resources none → Renan Figueiras |
| 20 | Levantar ferramentas | 2011-09-17 → 2011-09-19 A (+2d) | 2011-09-27 → 2011-09-22 A (-5d) | 8d → 3d | 0% → 100% |  | none → 15 | resources none → Guilherme Fay; Jose Guimarães |
| 21 | **Elaboração** | 2011-09-29 A | 2011-10-24 → 2011-10-18 (-6d) | 18d → 14d | 0% → 64% |  |  |  |
| 22 | **E1** | 2011-09-29 A | 2011-10-12 → 2011-10-08 A (-4d) | 10d → 7d | 0% → 100% |  |  |  |
| 23 | Terceira reunião | 2011-09-29 A | 2011-09-29 → 2011-09-30 A (+1d) |  | 0% → 100% |  |  | resources none → Filipe Barbosa; Jose Guimarães; Guilherme Fay; Renan Figueiras; Vinicius Vieira; Henrique Pereira |
| 24 | Refinar requisitos | 2011-09-30 A | 2011-10-03 → 2011-10-04 A (+1d) | 2d → 3d | 0% → 100% |  | none → 23 | resources none → Vinicius Vieira; Jose Guimarães; Filipe Barbosa |
| 25 | Elaborar diagrama de casos de uso inicial | 2011-10-04 A | 2011-10-05 A |  | 0% → 100% |  | none → 24 | resources none → Vinicius Vieira |
| 26 | Elaborar documento de visão | 2011-10-05 → 2011-10-04 A (-1d) | 2011-10-12 → 2011-10-08 A (-4d) | 6d → 1d | 0% → 100% |  | none → 24 | constraint none → finish no earlier than 2011-10-08; resources none → Guilherme Fay; Jose Guimarães |
| 27 | Elaborar documento de arquitetura | 2011-10-05 → 2011-09-30 A (-5d) | 2011-10-12 → 2011-10-07 A (-5d) |  | 0% → 100% |  | none → 23 | resources none → Rafael Queiroz |
| 28 | **E2** | 2011-10-13 → 2011-10-10 A (-3d) | 2011-10-21 → 2011-10-18 (-3d) |  | 0% → 25% | none → 0d | none → 22 |  |
| 29 | Quarta reunião | 2011-10-13 → 2011-10-10 A (-3d) | 2011-10-13 → 2011-10-10 A (-3d) |  | 0% → 100% |  |  | resources none → Filipe Barbosa; Vinicius Vieira; GuilhermeCalixto; Jose Guimarães; Guilherme Fay; Resma de papel |
| 30 | Refinamento de requisitos | 2011-10-15 → 2011-10-11 A (-4d) | 2011-10-17 → 2011-10-11 A (-6d) | 2d → 1d | 0% → 100% |  | none → 29 | resources none → Filipe Barbosa; Jose Guimarães; Vinicius Vieira |
| 32 | Implementar componentes (Modulo EAP) | 2011-10-13 → 2011-10-11 (-2d) | 2011-10-14 → 2011-10-17 (+3d) | 2d → 4d |  | none → 1d | none → 30 | was named Implementar componentes (Modulo WBS); resources none → Filipe Barbosa; Rafael Queiroz |
| 33 | Teste | 2011-10-17 → 2011-10-12 (-5d) | 2011-10-19 → 2011-10-17 (-2d) | 3d → 4d |  | none → 0d | none → 30 | resources none → GuilhermeCalixto; Vinicius Vieira |
| 34 | Entrega do build 1 - definir modulo EAP | 2011-10-20 → 2011-10-17 (-3d) | 2011-10-20 → 2011-10-18 (-2d) |  |  | none → 0d | none → 33 | was named Entrega do build 1 - definir modulo WBS; resources none → GuilhermeCalixto; Henrique Pereira; Jose Guimarães; Renan Figueiras; Vinicius Vieira |
| 35 | Gerar relatorio de retrospectiva | 2011-10-21 → 2011-10-11 A (-10d) | 2011-10-21 → 2011-10-11 A (-10d) |  | 0% → 100% |  | none → 29 | resources none → Henrique Pereira; Renan Figueiras |
| 36 | **Construção** | 2011-10-21 → 2011-10-19 (-2d) | 2011-11-18 → 2011-11-21 (+3d) | 21d → 24d |  |  |  |  |
| 37 | **C1** | 2011-10-21 → 2011-10-19 (-2d) | 2011-10-31 → 2011-10-27 (-4d) |  |  | none → 0d |  |  |
| 38 | Quinta reunião | 2011-10-21 → 2011-10-19 (-2d) | 2011-10-24 → 2011-10-19 (-5d) | 2d → 1d |  | none → 0d |  | resources none → Filipe Barbosa; Guilherme Fay; GuilhermeCalixto; Henrique Pereira; Jose Guimarães; Rafael Queiroz; Renan Figueiras; Vinicius Vieira |
| 39 | Implementar componentes da iteração | 2011-10-24 → 2011-10-20 (-4d) | 2011-10-26 → 2011-10-24 (-2d) |  |  | none → 0d | none → 38 | resources none → Filipe Barbosa; Rafael Queiroz |
| 40 | Teste | 2011-10-26 → 2011-10-25 (-1d) | 2011-10-27 → 2011-10-25 (-2d) | 2d → 1d |  | none → 0d | none → 39 | resources none → GuilhermeCalixto; Vinicius Vieira |
| 41 | Feedback do cliente | 2011-10-27 → 2011-10-26 (-1d) | 2011-10-27 → 2011-10-26 (-1d) |  |  | none → 0d | none → 40 | resources none → Professor Hilmer |
| 42 | Entrega do build 2 - integrar modulo EAP com o modulo do projeto | 2011-10-27 → 2011-10-26 (-1d) | 2011-10-31 → 2011-10-27 (-4d) | 3d → 1d |  | none → 0d | none → 41 | was named Entrega do build 2 - integrar modulo wbs com o modulo do projeto; resources none → Henrique Pereira; Jose Guimarães; Renan Figueiras |
| 43 | **C2** | 2011-10-31 → 2011-10-28 (-3d) |  | 7d → 8d |  | none → 0d | none → 37 |  |
| 44 | Refinamento de requisitos | 2011-10-31 → 2011-10-28 (-3d) | 2011-11-02 → 2011-11-01 (-1d) |  |  | none → 0d |  | resources none → Jose Guimarães; Guilherme Fay; Renan Figueiras |
| 45 | Integrar sub-sistemas | 2011-11-03 → 2011-11-02 (-1d) | 2011-11-07 → 2011-11-03 (-4d) | 3d → 2d |  | none → 0d | none → 44 | resources none → Filipe Barbosa; Rafael Queiroz |
| 46 | Testar e avaliar | 2011-11-07 → 2011-11-04 (-3d) | 2011-11-07 → 2011-11-08 (+1d) | 1d → 3d |  | none → 0d | none → 45 | resources none → GuilhermeCalixto; Henrique Pereira; Professor Hilmer |
| 47 | Entrega do build 3 - definir e implemetar a interface da WBS | 2011-11-08 → 2011-11-04 (-4d) |  | 1d → 3d |  | none → 0d | none → 46SS | resources none → Renan Figueiras; Filipe Barbosa; Guilherme Fay; Jose Guimarães; Vinicius Vieira |
| 48 | **C3** | 2011-11-08 → 2011-11-09 (+1d) | 2011-11-16 → 2011-11-21 (+5d) | 7d → 9d |  | none → 0d | none → 43 |  |
| 49 | Feedbak do cliente | 2011-11-08 → 2011-11-09 (+1d) |  | 3d → 2d |  | none → 0d |  | resources none → Professor Hilmer |
| 50 | Implmentar requisitos | 2011-11-10 → 2011-11-11 (+1d) | 2011-11-11 → 2011-11-15 (+4d) | 2d → 3d |  | none → 0d | none → 49 | resources none → Filipe Barbosa; Rafael Queiroz |
| 51 | Testes | 2011-11-12 → 2011-11-16 (+4d) | 2011-11-12 → 2011-11-18 (+6d) | 1d → 3d |  | none → 0d | none → 50 | resources none → GuilhermeCalixto; Renan Figueiras; Vinicius Vieira |
| 52 | Entrega do build 4 - Acoplamento das builds | 2011-11-13 → 2011-11-21 (+8d) | 2011-11-13 → 2011-11-21 (+8d) |  |  | none → 0d | none → 51 | resources none → GuilhermeCalixto; Henrique Pereira; Jose Guimarães |
| 53 | **Transição** | 2011-11-18 → 2011-11-22 (+4d) | 2011-12-16 → 2011-12-19 (+3d) | 21d → 20d |  |  |  |  |
| 54 | **T1** | 2011-11-18 → 2011-11-22 (+4d) | 2011-12-16 → 2011-12-19 (+3d) | 21d → 20d |  | none → 0d |  |  |
| 55 | Desenvolver material de suporte | 2011-11-18 → 2011-11-22 (+4d) |  | 7d → 5d |  | none → 0d |  | resources none → Henrique Pereira; Renan Figueiras |
| 56 | Gerenciar teste de aceitação | 2011-11-28 → 2011-11-29 (+1d) | 2011-12-01 → 2011-12-05 (+4d) | 4d → 5d |  | none → 0d | none → 55 | resources none → Guilherme Fay; GuilhermeCalixto; Jose Guimarães |
| 57 | Correção de erros | 2011-12-01 → 2011-12-06 (+5d) | 2011-12-09 → 2011-12-12 (+3d) | 7d → 5d |  | none → 0d | none → 56 | resources none → Filipe Barbosa; Rafael Queiroz |
| 58 | Entrega da release do projeto - Gerar WBS | 2011-12-09 → 2011-12-13 (+4d) | 2011-12-15 → 2011-12-19 (+4d) |  |  | none → 0d | none → 57 | resources none → Filipe Barbosa; Guilherme Fay; GuilhermeCalixto; Henrique Pereira; Jose Guimarães; Rafael Queiroz; Renan Figueiras; Resma de papel; Vinicius Vieira |
