# DOTPROJECTEAP_Guilherme_Fay

How a schedule from MS Project changed from version to version. A marks actual dates.

## Version 1 (saved 2011-11-07, file DPEAP_CRN_20111031.mpp)

Note of the change: Cronograma/DPEAP_CRN_20111031.mpp

| ID | WBS | Task | Duration | Start | Finish | Predecessors | Total float | Constraint |
| --- | --- | --- | --- | --- | --- | --- | --- | --- |
| 1 | 1 | **DotProjectEAP** | 86d | 2011-08-22 | 2011-12-19 |  |  |  |
| 2 | 1.1 | **Iniciação 1** | 16d | 2011-08-22 | 2011-09-12 |  |  |  |
| 3 | 1 | **Gerenciamento do Projeto** | 1d? | 2011-08-22 | 2011-08-22 |  |  |  |
| 4 |  | Estudo inicial | 4d | 2011-08-22 | 2011-08-25 |  | -13d |  |
| 5 |  | Primeira Reunião | 1d? | 2011-08-22 | 2011-08-22 |  | -10d |  |
| 6 |  | Definir Escopo | 2d | 2011-08-26 | 2011-08-29 | 4, 5 | -13d |  |
| 7 |  | Elaborar Termo de Abertura basico | 4d | 2011-08-30 | 2011-09-02 | 6 | -13d |  |
| 8 | 2 | **Modelagem de Negócios** | 1d? | 2011-08-22 | 2011-08-22 |  |  |  |
| 9 |  | Definir Papeis e Responsabilidades | 1d | 2011-09-05 | 2011-09-05 | 7 | -10d |  |
| 10 |  | Elaborar EAP | 2d | 2011-09-05 | 2011-09-06 | 7 | -13d |  |
| 11 |  | Elaborar cronograma Inicial | 2d | 2011-09-07 | 2011-09-08 | 10 | -13d |  |
| 12 | 3 | **Requisitos** | 1d | 2011-08-22 | 2011-08-22 |  |  |  |
| 13 |  | Analizar o Problema | 1d | 2011-08-30 | 2011-08-30 | 6 | 79d | start no earlier than 1999-05-04 |
| 14 |  | Compreender as necessidades dos envolvidos | 1d | 2011-08-30 | 2011-08-30 | 6 | 79d | start no earlier than 1999-05-04 |
| 15 | 7 | **Configuração & Mudança** | 1d | 2011-08-22 | 2011-08-22 |  |  |  |
| 16 |  | Definir Gerência de configuração | 2d | 2011-08-30 | 2011-08-31 | 6 | -7d |  |
| 17 | 1.2 | **Iniciação 2** | 16d | 2011-09-12 | 2011-10-03 |  |  |  |
| 18 | 1 | **Gerenciamento do Projeto** | 1d? | 2011-09-12 | 2011-09-12 |  |  |  |
| 19 |  | Segunda Reunião | 1d? | 2011-09-12 | 2011-09-12 |  | 0d |  |
| 20 |  | Refinar Termo de Abertura basico | 2d | 2011-09-12 | 2011-09-13 | 6 | -3d |  |
| 21 |  | Levantamento de Riscos | 2d | 2011-09-14 | 2011-09-15 | 20 | -3d |  |
| 22 |  | Levantar Orçamento inicial | 2d | 2011-09-14 | 2011-09-15 | 20 | -3d |  |
| 23 |  | Definir Artefatos | 2d | 2011-09-14 | 2011-09-15 | 20 | -3d |  |
| 24 |  | Levantar Ferramentas | 2d | 2011-09-14 | 2011-09-15 | 20 | -3d |  |
| 25 | 3 | **Requisitos** | 1d? | 2011-09-12 | 2011-09-12 |  |  |  |
| 26 |  | Levantar Funcionalidades do Sistema (Requisitos iniciais) | 2d | 2011-09-14 | 2011-09-15 | 20 | -1d | start no earlier than 1999-05-04 |
| 27 | 1.2.3 | **Analise e Design** | 5d? | 2011-09-12 | 2011-09-16 |  |  |  |
| 28 |  | Definir Arquitetura | 2d | 2011-09-16 | 2011-09-19 | 26 | -1d |  |
| 29 | 7 | **Configuração & Mudança** | 1d? | 2011-09-12 | 2011-09-12 |  |  |  |
| 30 |  | Criar Ambiente de Configuração de Versões | 2d | 2011-09-12 | 2011-09-13 |  | -1d |  |
| 31 | 1.3 | **Elaboração 1** | 11d | 2011-10-03 | 2011-10-17 |  |  |  |
| 32 | 1.3.1 | **Gerenciamento do Projeto** | 1d | 2011-10-03 | 2011-10-03 |  |  |  |
| 33 |  | Terceira Reunião | 1d | 2011-10-03 | 2011-10-03 |  | 0d |  |
| 34 |  | Reavaliar escopo e risco do projeto | 2d | 2011-10-03 | 2011-10-04 | 20, 21 | -1d |  |
| 35 | 1.3.2 | **Requisitos** | 1d? | 2011-10-03 | 2011-10-03 |  |  |  |
| 36 |  | Levantar Requisitos (Funcionais) | 2d | 2011-09-14 | 2011-09-15 | 20 | 11d | start no earlier than 1999-05-04 |
| 37 |  | Levantar Requisitos (Nao Funcionais) | 2d | 2011-09-14 | 2011-09-15 | 20 | 67d | start no earlier than 1999-05-04 |
| 38 |  | Elaborar diagrama de Casos de uso inicial | 1d? | 2011-10-03 | 2011-10-03 | 36 | 0d |  |
| 39 |  | Elaborar documento visão | 1d? | 2011-10-03 | 2011-10-03 |  | 0d |  |
| 40 | 1.3.3 | **Analise e Design** | 5d? | 2011-10-03 | 2011-10-07 |  |  |  |
| 41 |  | Refinar Arquitetura | 2d | 2011-10-03 | 2011-10-04 |  | 3d |  |
| 42 | 1.3.4 | **Configuração & Mudança** | 1d? | 2011-10-03 | 2011-10-03 |  |  |  |
| 43 |  | Alterar e liberar itens de configuração | 1d | 2011-10-03 | 2011-10-03 |  | 0d |  |
| 44 |  | Definir Criação de Branch e Merge | 2d | 2011-10-03 | 2011-10-04 |  | -1d |  |
| 45 |  | Criar uma Tag 1.0 com os itens Originais do DotProject - Baseline | 1d | 2011-10-03 | 2011-10-03 |  | 0d |  |
| 46 |  | Monitorar Status de configuração | 1d | 2011-10-03 | 2011-10-03 |  | 0d |  |
| 47 | 1.4 | **Elaboração 2** | 6d | 2011-10-17 | 2011-10-24 |  |  |  |
| 48 | 1.4.1 | **Gerenciamento do Projeto** | 1d? | 2011-10-17 | 2011-10-17 |  |  |  |
| 49 |  | Quarta reunião | 1d | 2011-10-17 | 2011-10-17 |  | 0d |  |
| 50 |  | Entregar termo de Abertura Basico | 0d | 2011-10-24 | 2011-10-24 |  |  |  |
| 51 | 1.4.2 | **Requisitos** | 1d? | 2011-10-17 | 2011-10-17 |  |  |  |
| 52 |  | Refinar Requisitos (Funcionais) | 1d | 2011-09-05 | 2011-09-05 | 7 | 29d | start no earlier than 1999-05-04 |
| 53 |  | Refinar Requisitos (Nao Funcionais) | 1d | 2011-09-05 | 2011-09-05 | 7 | 31d | start no earlier than 1999-05-04 |
| 54 |  | Refinar diagrama de Casos de uso inicial | 1d? | 2011-10-17 | 2011-10-17 | 52 | 0d |  |
| 55 |  | Entregar documento visão | 0d | 2011-10-19 | 2011-10-19 | 52, 53 |  |  |
| 56 | 1.4.3 | **Analise e Design** | 1d? | 2011-10-17 | 2011-10-17 |  |  |  |
| 57 |  | Entregar documento de Arquitetura | 0d | 2011-10-17 | 2011-10-17 |  |  |  |
| 58 | 1.4.4 | **Implementação** | 1d? | 2011-10-17 | 2011-10-17 |  |  |  |
| 59 |  | Implementar componentes (Módulo EAP) | 4d | 2011-10-19 | 2011-10-24 | 55 | -5d |  |
| 60 |  | Entrega da Build 1.1 | 0d | 2011-10-24 | 2011-10-24 |  |  | start no earlier than 2011-10-24 |
| 61 | 1.4.5 | **Teste** | 1d? | 2011-10-17 | 2011-10-17 |  |  |  |
| 62 |  | Criar plano de teste Build 1.1 | 2d | 2011-10-17 | 2011-10-18 |  | -1d |  |
| 63 | 1.4.6 | **Configuração & Mudança** | 1d | 2011-10-17 | 2011-10-17 |  |  |  |
| 64 |  | Criar um Branch 1.1.1 Para paralelizar a implementação e testes | 1d | 2011-10-24 | 2011-10-24 | 60 | -5d |  |
| 65 |  | Criar uma Tag com os itens de configuração referentes a build 1.1 | 1d | 2011-10-24 | 2011-10-24 | 60 | -5d |  |
| 66 |  | Monitorar Status de configuração | 1d | 2011-10-17 | 2011-10-17 |  | 0d |  |
| 67 | 1.5 | **Construção 1** | 11d | 2011-10-24 | 2011-11-07 |  |  |  |
| 68 | 1.5.1 | **Gerenciamento do Projeto** | 1d? | 2011-10-24 | 2011-10-24 |  |  |  |
| 69 |  | Quinta reunião | 1d | 2011-10-24 | 2011-10-24 |  | 0d |  |
| 70 |  | Gerar relatório de retrospectiva | 1d? | 2011-10-25 | 2011-10-25 | 47 | -1d |  |

| ID | WBS | Task | Duration | Start | Finish | Predecessors | Total float | Constraint |
| --- | --- | --- | --- | --- | --- | --- | --- | --- |
| 71 |  | Feedback do cliente | 1d? | 2011-10-24 | 2011-10-24 |  | 0d |  |
| 72 | 1.5.2 | **Requisitos** | 1d | 2011-10-24 | 2011-10-24 |  |  |  |
| 73 |  | Gerenciar requisitos Variaveis | 1d | 2011-10-24 | 2011-10-24 |  | 0d |  |
| 74 | 1.5.3 | **Implementação** | 1d? | 2011-10-24 | 2011-10-24 |  |  |  |
| 75 |  | Implementar componentes (integrar modulo EAP com o modulo do projeto) | 5d | 2011-10-24 | 2011-10-28 | 55 | -4d |  |
| 76 |  | Entrega da Build 1.2 | 0d | 2011-11-07 | 2011-11-07 |  |  |  |
| 77 | 1.5.4 | **Teste** | 1d? | 2011-10-24 | 2011-10-24 |  |  |  |
| 78 |  | Criar plano de teste Build 1.2 | 1d | 2011-10-24 | 2011-10-24 |  | 0d |  |
| 79 |  | Testar Build 1.1 | 2d | 2011-10-24 | 2011-10-25 | 60 | -2d |  |
| 80 |  | Gerar relatório de Testes build 1.1 | 1d? | 2011-10-26 | 2011-10-26 | 79 | -2d |  |
| 81 |  | Correção dos "bugs" build 1.1 | 1d? | 2011-10-26 | 2011-10-26 | 79 | -2d |  |
| 82 | 1.5.5 | **Configuração & Mudança** | 1d | 2011-10-24 | 2011-10-24 |  |  |  |
| 83 |  | Criar um Branch 1.2.1 Para paralelizar a implementação e testes | 1d | 2011-11-07 | 2011-11-07 | 76 | -10d |  |
| 84 |  | Criar uma Tag com os itens de configuração referentes a build 1.2 | 1d | 2011-11-07 | 2011-11-07 | 76 | -10d |  |
| 85 |  | Monitorar Status de configuração | 1d | 2011-10-24 | 2011-10-24 |  | 0d |  |
| 86 | 1.6 | **Construção 2** | 11d | 2011-11-07 | 2011-11-21 |  |  |  |
| 87 | 1.6.1 | **Gerenciamento do Projeto** | 1d? | 2011-11-07 | 2011-11-07 |  |  |  |
| 88 |  | Sexta reunião | 1d | 2011-11-07 | 2011-11-07 |  | 0d |  |
| 89 |  | Gerar relatório de retrospectiva | 1d? | 2011-11-08 | 2011-11-08 | 67 | -1d |  |
| 90 |  | Feedback do cliente | 1d? | 2011-11-07 | 2011-11-07 |  | 0d |  |
| 91 | 1.6.2 | **Requisitos** | 1d | 2011-11-07 | 2011-11-07 |  |  |  |
| 92 |  | Gerenciar requisitos Variaveis | 1d | 2011-11-07 | 2011-11-07 |  | 0d |  |
| 93 | 1.6.3 | **Implementação** | 1d? | 2011-11-07 | 2011-11-07 |  |  |  |
| 94 |  | Implementar componentes (Definir modulo EAP com modulo do projeto) | 6d | 2011-11-07 | 2011-11-14 | 55 | -5d |  |
| 95 |  | Entrega da Build 1.3 | 0d | 2011-11-21 | 2011-11-21 |  |  |  |
| 96 | 1.6.4 | **Teste** | 1d? | 2011-11-07 | 2011-11-07 |  |  |  |
| 97 |  | Criar plano de teste Build 1.3 | 1d | 2011-11-07 | 2011-11-07 |  | 0d |  |
| 98 |  | Testar Build 1.2 | 4d | 2011-11-07 | 2011-11-10 | 76 | -5d |  |
| 99 |  | Gerar relatório de Testes Build 1.2 | 1d? | 2011-11-11 | 2011-11-11 | 98 | -4d |  |
| 100 |  | Correção dos "bugs" Build 1.2 | 2d | 2011-11-11 | 2011-11-14 | 98 | -5d |  |
| 101 | 1.6.5 | **Configuração & Mudança** | 1d | 2011-11-07 | 2011-11-07 |  |  |  |
| 102 |  | Criar um Branch 1.3.1 Para paralelizar a implementação e testes | 1d | 2011-11-21 | 2011-11-21 | 95 | -10d |  |
| 103 |  | Criar uma Tag com os itens de configuração referentes a build 1.3 | 1d | 2011-11-21 | 2011-11-21 | 95 | -10d |  |
| 104 |  | Monitorar Status de configuração | 1d | 2011-11-07 | 2011-11-07 |  | 0d |  |
| 105 | 1.7 | **Construção 3** | 11d | 2011-11-21 | 2011-12-05 |  |  |  |
| 106 | 1.7.1 | **Gerenciamento do Projeto** | 1d | 2011-11-21 | 2011-11-21 |  |  |  |
| 107 |  | Sétima Reunião | 1d | 2011-11-21 | 2011-11-21 |  | 0d |  |
| 108 |  | Gerar relatório de retrospectiva | 1d? | 2011-11-22 | 2011-11-22 | 86 | -1d |  |
| 109 |  | Feedback do cliente | 1d? | 2011-11-21 | 2011-11-21 |  | 0d |  |
| 110 | 1.7.2 | **Requisitos** | 1d | 2011-11-21 | 2011-11-21 |  |  |  |
| 111 |  | Gerenciar requisitos Variaveis | 1d | 2011-11-21 | 2011-11-21 |  | 0d |  |
| 112 | 1.7.3 | **Implementação** | 1d? | 2011-11-21 | 2011-11-21 |  |  |  |
| 113 |  | Implementar componentes (Acoplamento das builds) | 7d | 2011-11-21 | 2011-11-29 | 55 | -6d |  |
| 114 |  | Entrega da Build 1.4 | 0d | 2011-12-05 | 2011-12-05 |  |  |  |
| 115 | 1.7.4 | **Teste** | 1d? | 2011-11-21 | 2011-11-21 |  |  |  |
| 116 |  | Criar plano de teste Build 1.4 | 1d | 2011-11-21 | 2011-11-21 |  | 0d |  |
| 117 |  | Testar Build 1.3 | 4d | 2011-11-21 | 2011-11-24 | 95 | -5d |  |
| 118 |  | Gerar relatório de Testes Build 1.3 | 1d? | 2011-11-25 | 2011-11-25 | 117 | -4d |  |
| 119 |  | Correção dos "bugs" Build 1.3 | 2d | 2011-11-25 | 2011-11-28 | 117 | -5d |  |
| 120 | 1.7.5 | **Configuração & Mudança** | 1d | 2011-11-21 | 2011-11-21 |  |  |  |
| 121 |  | Criar um Branch 1.4.1 Para paralelizar a implementação e testes | 1d | 2011-12-05 | 2011-12-05 | 114 | -10d |  |
| 122 |  | Criar uma Tag com os itens de configuração referentes a build 1.4 | 1d | 2011-12-05 | 2011-12-05 | 114 | -10d |  |
| 123 |  | Monitorar Status de configuração | 1d | 2011-11-21 | 2011-11-21 |  | 0d |  |
| 124 | 1.8 | **Transição** | 11d | 2011-12-05 | 2011-12-19 |  |  |  |
| 125 | 1.8.1 | **Gerenciamento do Projeto** | 1d? | 2011-12-05 | 2011-12-05 |  |  |  |
| 126 |  | Oitava Reunião | 1d | 2011-12-05 | 2011-12-05 |  | 10d | start no earlier than 2011-12-05 |
| 127 |  | Gerar relatório de retrospectiva | 1d? | 2011-12-06 | 2011-12-06 | 105 | -1d |  |
| 128 |  | Feedback do cliente | 1d? | 2011-12-05 | 2011-12-05 |  | 0d |  |
| 129 |  | Finalizar Projeto | 0d | 2011-12-06 | 2011-12-06 | 131 |  |  |
| 130 | 1.8.2 | **Implementação** | 1d | 2011-12-05 | 2011-12-05 |  |  |  |
| 131 |  | Entrega da Release | 0d | 2011-12-06 | 2011-12-06 | 136 |  |  |
| 132 | 1.8.3 | **Teste** | 1d | 2011-12-05 | 2011-12-05 |  |  |  |
| 133 |  | Testar Build 1.4 | 4d | 2011-12-05 | 2011-12-08 | 114 | -4d |  |
| 134 |  | Gerar relatório de Testes Build 1.4 | 1d? | 2011-12-09 | 2011-12-09 | 133 | -4d |  |
| 135 |  | Correção dos "bugs" Build 1.4 | 1d? | 2011-12-09 | 2011-12-09 | 133 | -4d |  |
| 136 |  | Validar Release | 1d | 2011-12-05 | 2011-12-05 |  | 0d |  |
| 137 | 1.8.4 | **Configuração & Mudança** | 1d | 2011-12-05 | 2011-12-05 |  |  |  |
| 138 |  | Alterar e liberar itens de configuração | 1d | 2011-12-05 | 2011-12-05 |  | 0d |  |
| 139 |  | Criar uma Tag com os ultimos itens de configuração para Release | 1d | 2011-12-06 | 2011-12-06 | 131 | -1d |  |

## Version 2 (saved 2011-11-07, file DPEAP_CRN_20111031.mpp)

Last finish stays 2011-12-19.

Removed: 69 Quinta reunião; 70 Gerar relatório de retrospectiva; 71 Feedback do cliente; 73 Gerenciar requisitos Variaveis; 75 Implementar componentes (integrar modulo EAP com o modulo do projeto); 76 Entrega da Build 1.2; 78 Criar plano de teste Build 1.2; 79 Testar Build 1.1; 80 Gerar relatório de Testes build 1.1; 81 Correção dos "bugs" build 1.1; 83 Criar um Branch 1.2.1 Para paralelizar a implementação e testes; 84 Criar uma Tag com os itens de configuração referentes a build 1.2; 85 Monitorar Status de configuração; 88 Sexta reunião; 89 Gerar relatório de retrospectiva; 90 Feedback do cliente; 92 Gerenciar requisitos Variaveis; 94 Implementar componentes (Definir modulo EAP com modulo do projeto); 95 Entrega da Build 1.3; 97 Criar plano de teste Build 1.3; 98 Testar Build 1.2; 99 Gerar relatório de Testes Build 1.2; 100 Correção dos "bugs" Build 1.2; 102 Criar um Branch 1.3.1 Para paralelizar a implementação e testes; 103 Criar uma Tag com os itens de configuração referentes a build 1.3; 104 Monitorar Status de configuração; 107 Sétima Reunião; 108 Gerar relatório de retrospectiva; 109 Feedback do cliente; 111 Gerenciar requisitos Variaveis; 113 Implementar componentes (Acoplamento das builds); 114 Entrega da Build 1.4; 116 Criar plano de teste Build 1.4; 117 Testar Build 1.3; 118 Gerar relatório de Testes Build 1.3; 119 Correção dos "bugs" Build 1.3; 121 Criar um Branch 1.4.1 Para paralelizar a implementação e testes; 122 Criar uma Tag com os itens de configuração referentes a build 1.4; 123 Monitorar Status de configuração; 126 Oitava Reunião; 127 Gerar relatório de retrospectiva; 128 Feedback do cliente; 129 Finalizar Projeto; 131 Entrega da Release; 133 Testar Build 1.4; 134 Gerar relatório de Testes Build 1.4; 135 Correção dos "bugs" Build 1.4; 136 Validar Release; 138 Alterar e liberar itens de configuração; 139 Criar uma Tag com os ultimos itens de configuração para Release

## Version 3 (data date 2011-11-06, saved 2011-11-07, file DPEAP_CRN_20111031.mpp)

Last finish stays 2011-12-19. Complete tasks 0 → 48.

Changed:

| ID | Task | Start | Finish | Duration | Complete | Total float | Other |
| --- | --- | --- | --- | --- | --- | --- | --- |
| 4 | Estudo inicial | 2011-08-22 → 2011-08-24 A (+2d) | 2011-08-25 A | 4d → 1.25d | 0% → 100% | -13d → none |  |
| 5 | Primeira Reunião | 2011-08-22 A | 2011-08-22 A | 1d? → 0.5d? | 0% → 100% | -10d → none |  |
| 6 | Definir Escopo | 2011-08-26 A | 2011-08-29 A |  | 0% → 100% | -13d → none |  |
| 7 | Elaborar Termo de Abertura basico | 2011-08-30 → 2011-09-01 A (+2d) | 2011-09-02 A | 4d → 1.25d | 0% → 100% | -13d → none |  |
| 9 | Definir Papeis e Responsabilidades | 2011-09-05 → 2011-09-12 A (+7d) | 2011-09-05 → 2011-09-12 A (+7d) | 1d → 0.5d | 0% → 100% | -10d → none |  |
| 10 | Elaborar EAP | 2011-09-05 → 2011-09-06 A (+1d) | 2011-09-06 A | 2d → 1d | 0% → 100% | -13d → none |  |
| 11 | Elaborar cronograma Inicial | 2011-09-07 → 2011-09-08 A (+1d) | 2011-09-08 A | 2d → 1d | 0% → 100% | -13d → none |  |
| 13 | Analizar o Problema | 2011-08-30 A | 2011-08-30 A | 1d → 0.5d | 0% → 100% | 79d → none |  |
| 14 | Compreender as necessidades dos envolvidos | 2011-08-30 A | 2011-08-30 A | 1d → 0.5d | 0% → 100% | 79d → none |  |
| 16 | Definir Gerência de configuração | 2011-08-30 → 2011-08-31 A (+1d) | 2011-08-31 A | 2d → 1d | 0% → 100% | -7d → none |  |
| 19 | Segunda Reunião | 2011-09-12 A | 2011-09-12 A | 1d? → 0.5d? | 0% → 100% | 0d → none |  |
| 20 | Refinar Termo de Abertura basico | 2011-09-12 → 2011-09-13 A (+1d) | 2011-09-13 A | 2d → 1d | 0% → 100% | -3d → none |  |
| 21 | Levantamento de Riscos | 2011-09-14 → 2011-09-15 A (+1d) | 2011-09-15 A | 2d → 1d | 0% → 100% | -3d → none |  |
| 22 | Levantar Orçamento inicial | 2011-09-14 → 2011-09-15 A (+1d) | 2011-09-15 A | 2d → 1d | 0% → 100% | -3d → none |  |
| 23 | Definir Artefatos | 2011-09-14 → 2011-09-15 A (+1d) | 2011-09-15 A | 2d → 0.5d | 0% → 100% | -3d → none |  |
| 24 | Levantar Ferramentas | 2011-09-14 → 2011-09-15 A (+1d) | 2011-09-15 A | 2d → 1d | 0% → 100% | -3d → none |  |
| 26 | Levantar Funcionalidades do Sistema (Requisitos iniciais) | 2011-09-14 A | 2011-09-15 → 2011-09-14 A (-1d) | 2d → 1d | 0% → 100% | -1d → none |  |
| 28 | Definir Arquitetura | 2011-09-16 → 2011-09-19 A (+3d) | 2011-09-19 A | 2d → 1d | 0% → 100% | -1d → none |  |
| 30 | Criar Ambiente de Configuração de Versões | 2011-09-12 → 2011-09-13 A (+1d) | 2011-09-13 A | 2d → 1d | 0% → 100% | -1d → none |  |
| 33 | Terceira Reunião | 2011-10-03 A | 2011-10-03 A | 1d → 0.5d | 0% → 100% | 0d → none |  |
| 34 | Reavaliar escopo e risco do projeto | 2011-10-03 → 2011-10-04 A (+1d) | 2011-10-04 A | 2d → 1d | 0% → 100% | -1d → none |  |
| 36 | Levantar Requisitos (Funcionais) | 2011-09-14 A | 2011-09-15 → 2011-09-14 A (-1d) | 2d → 1d | 0% → 100% | 11d → none |  |
| 37 | Levantar Requisitos (Nao Funcionais) | 2011-09-14 A | 2011-09-15 → 2011-09-14 A (-1d) | 2d → 1d | 0% → 100% | 67d → none |  |
| 38 | Elaborar diagrama de Casos de uso inicial | 2011-10-03 A | 2011-10-03 A | 1d? → 0.5d? | 0% → 100% | 0d → none |  |
| 39 | Elaborar documento visão | 2011-10-03 A | 2011-10-03 A | 1d? → 0.5d? | 0% → 100% | 0d → none |  |
| 41 | Refinar Arquitetura | 2011-10-03 → 2011-10-04 A (+1d) | 2011-10-04 A | 2d → 1d | 0% → 100% | 3d → none |  |
| 43 | Alterar e liberar itens de configuração | 2011-10-03 A | 2011-10-03 A | 1d → 0.5d | 0% → 100% | 0d → none |  |
| 44 | Definir Criação de Branch e Merge | 2011-10-03 → 2011-10-04 A (+1d) | 2011-10-04 A | 2d → 1d | 0% → 100% | -1d → none |  |
| 45 | Criar uma Tag 1.0 com os itens Originais do DotProject - Baseline | 2011-10-03 A | 2011-10-03 A |  | 0% → 100% | 0d → none |  |
| 46 | Monitorar Status de configuração | 2011-10-03 A | 2011-10-03 A |  | 0% → 100% | 0d → none |  |
| 49 | Quarta reunião | 2011-10-17 A | 2011-10-17 A |  | 0% → 100% | 0d → none |  |
| 50 | Entregar termo de Abertura Basico | 2011-10-24 A | 2011-10-24 A |  | 0% → 100% |  |  |
| 52 | Refinar Requisitos (Funcionais) | 2011-09-05 A | 2011-09-05 A |  | 0% → 100% | 29d → none |  |
| 53 | Refinar Requisitos (Nao Funcionais) | 2011-09-05 A | 2011-09-05 A |  | 0% → 100% | 31d → none |  |
| 54 | Refinar diagrama de Casos de uso inicial | 2011-10-17 A | 2011-10-17 A |  | 0% → 100% | 0d → none |  |
| 55 | Entregar documento visão | 2011-10-19 A | 2011-10-19 A |  | 0% → 100% |  |  |
| 57 | Entregar documento de Arquitetura | 2011-10-17 A | 2011-10-17 A |  | 0% → 100% |  |  |
| 59 | Implementar componentes (Módulo EAP) | 2011-10-19 → 2011-10-21 A (+2d) | 2011-10-24 A | 4d → 1.25d | 0% → 100% | -5d → none |  |
| 60 | Entrega da Build 1.1 | 2011-10-24 A | 2011-10-24 A |  | 0% → 100% |  |  |
| 62 | Criar plano de teste Build 1.1 | 2011-10-17 → 2011-10-18 A (+1d) | 2011-10-18 A | 2d → 1d | 0% → 100% | -1d → none |  |
| 64 | Criar um Branch 1.1.1 Para paralelizar a implementação e testes | 2011-10-24 A | 2011-10-24 A | 1d → 0.5d | 0% → 100% | -5d → none |  |
| 65 | Criar uma Tag com os itens de configuração referentes a build 1.1 | 2011-10-24 A | 2011-10-24 A | 1d → 0.5d | 0% → 100% | -5d → none |  |
| 66 | Monitorar Status de configuração | 2011-10-17 A | 2011-10-17 A | 1d → 0.5d | 0% → 100% | 0d → none |  |
| 68 | Gerenciamento do Projeto | 2011-10-24 A | 2011-10-24 A | 1d? → 0.5d? | 0% → 100% |  | resources none → Renan Figueiras |
| 69 | Requisitos | 2011-10-24 A | 2011-10-24 A |  | 0% → 100% |  |  |
| 70 | Implementação | 2011-10-24 A | 2011-10-24 A |  | 0% → 100% |  | resources none → Filipe Barbosa; Rafael Queiroz; Renan Figueiras; Vinicius Vieira |
| 71 | Teste | 2011-10-24 A | 2011-10-24 A | 1d? → 0.5d? | 0% → 100% |  | resources none → Guilherme Fay; Jose Guimarães |
| 72 | Configuração & Mudança | 2011-10-24 A | 2011-10-24 A | 1d → 0.5d | 0% → 100% |  | resources none → Guilherme Fay; Jose Guimarães |

## Version 4 (data date 2011-11-06, saved 2011-11-07, file DPEAP_CRN_20111031.mpp)

Last finish stays 2011-12-19.

Changed:

| ID | Task | Start | Finish | Complete |
| --- | --- | --- | --- | --- |
| 1 | **DotProjectEAP** | 2011-08-22 A |  | 0% → 73% |
| 2 | **Iniciação 1** | 2011-08-22 A | 2011-09-12 A | 0% → 100% |
| 3 | **Gerenciamento do Projeto** | 2011-08-22 A |  | 0% → 100% |
| 8 | **Modelagem de Negócios** |  |  | 0% → 100% |
| 12 | **Requisitos** |  |  | 0% → 100% |
| 15 | **Configuração & Mudança** |  |  | 0% → 100% |
| 17 | **Iniciação 2** | 2011-09-12 A |  | 0% → 100% |
| 18 | **Gerenciamento do Projeto** | 2011-09-12 A |  | 0% → 100% |
| 25 | **Requisitos** |  |  | 0% → 100% |
| 27 | **Analise e Design** |  |  | 0% → 100% |
| 29 | **Configuração & Mudança** |  |  | 0% → 100% |
| 31 | **Elaboração 1** |  |  | 0% → 100% |
| 32 | **Gerenciamento do Projeto** | 2011-10-03 A |  | 0% → 100% |
| 35 | **Requisitos** |  | 2011-10-03 A | 0% → 100% |
| 40 | **Analise e Design** |  |  | 0% → 100% |
| 42 | **Configuração & Mudança** | 2011-10-03 A |  | 0% → 100% |
| 47 | **Elaboração 2** |  | 2011-10-24 A | 0% → 100% |
| 48 | **Gerenciamento do Projeto** | 2011-10-17 A |  | 0% → 100% |
| 51 | **Requisitos** |  |  | 0% → 100% |
| 56 | **Analise e Design** | 2011-10-17 A | 2011-10-17 A | 0% → 100% |
| 58 | **Implementação** |  |  | 0% → 100% |
| 61 | **Teste** |  |  | 0% → 100% |
| 63 | **Configuração & Mudança** | 2011-10-17 A |  | 0% → 100% |
| 67 | **Construção 1** | 2011-10-24 A |  | 0% → 100% |

## Version 5 (data date 2011-11-07, saved 2011-11-11, file DPEAP_CRN_20111031.mpp)

Note of the change: Atualização do cronograma e modificação do grafico de earned value.

Last finish stays 2011-12-19. Complete tasks 48 → 45.

Changed:

| ID | Task | Start | Finish | Duration | Complete |
| --- | --- | --- | --- | --- | --- |
| 1 | **DotProjectEAP** |  |  |  | 73% → 52% |
| 67 | **Construção 1** |  |  |  | 100% → 14% |
| 68 | Gerenciamento do Projeto |  | 2011-10-24 A → 2011-11-07 (+14d) | 0.5d? → 11d | 100% → 5% |
| 70 | Implementação |  | 2011-10-24 A → 2011-11-04 (+11d) | 1d? → 10d | 100% → 10% |
| 71 | Teste | 2011-10-24 A → 2011-11-04 A (+11d) | 2011-10-24 A → 2011-11-07 (+14d) | 0.5d? → 2d | 100% → 25% |

## Version 6 (data date 2011-11-07, saved 2011-11-21, file DPEAP_CRN_20111114.mpp)

Note of the change: Atualização do cronograma para minha Sprint. Filipe

Last finish stays 2011-12-19. Complete tasks 45 → 56.

Added:

| ID | Task | Duration | Start | Finish | Resources |
| --- | --- | --- | --- | --- | --- |
| 75 | Redmine | 5d | 2011-11-08 A | 2011-11-13 A | Filipe Barbosa |
| 76 | Atualização do cronograma | 1d | 2011-11-10 A | 2011-11-10 A | Filipe Barbosa; Renan Figueiras |
| 79 | Definir o modo de implementação da API JavaScript | 5d | 2011-11-08 A | 2011-11-14 A | Rafael Queiroz; Renan Figueiras |
| 80 | Atualizar banco de dados | 4.5d | 2011-11-08 A | 2011-11-14 A | Filipe Barbosa |
| 82 | Suite de teste automatizado - PHP unit | 2d | 2011-11-12 A | 2011-11-14 A | Guilherme Fay; Jose Guimarães; Vinicius Vieira |
| 83 | Documentação | 2d | 2011-11-12 A | 2011-11-14 A | Guilherme Fay; Jose Guimarães; Vinicius Vieira |

Changed:

| ID | Task | Start | Finish | Duration | Complete | Other |
| --- | --- | --- | --- | --- | --- | --- |
| 1 | **DotProjectEAP** |  |  |  | 52% → 90% |  |
| 3 | **Gerenciamento do Projeto** |  | 2011-08-22 → 2011-09-02 A (+11d) | 1d? → 10d |  |  |
| 8 | **Modelagem de Negócios** |  | 2011-08-22 → 2011-09-12 A (+21d) | 1d? → 16d |  |  |
| 12 | **Requisitos** |  | 2011-08-22 → 2011-08-30 A (+8d) | 1d → 7d |  |  |
| 15 | **Configuração & Mudança** |  | 2011-08-22 → 2011-08-31 A (+9d) | 1d → 8d |  |  |
| 18 | **Gerenciamento do Projeto** |  | 2011-09-12 → 2011-09-15 A (+3d) | 1d? → 4d |  |  |
| 25 | **Requisitos** |  | 2011-09-12 → 2011-09-14 A (+2d) | 1d? → 3d |  |  |
| 27 | **Analise e Design** |  | 2011-09-16 → 2011-09-19 A (+3d) | 5d? → 6d |  |  |
| 29 | **Configuração & Mudança** |  | 2011-09-12 → 2011-09-13 A (+1d) | 1d? → 2d |  |  |
| 32 | **Gerenciamento do Projeto** |  | 2011-10-03 → 2011-10-04 A (+1d) | 1d → 2d |  |  |
| 42 | **Configuração & Mudança** |  | 2011-10-03 → 2011-10-04 A (+1d) | 1d? → 2d |  |  |
| 48 | **Gerenciamento do Projeto** |  | 2011-10-17 → 2011-10-24 A (+7d) | 1d? → 6d |  |  |
| 51 | **Requisitos** |  | 2011-10-17 A |  |  |  |
| 55 | Entregar documento visão | 2011-10-19 A → 2011-10-16 A (-3d) | 2011-10-19 A → 2011-10-17 A (-2d) | 0d → 1d |  |  |
| 58 | **Implementação** | 2011-10-17 → 2011-10-21 A (+4d) | 2011-10-17 → 2011-10-24 A (+7d) | 1d? → 2d |  |  |
| 61 | **Teste** |  | 2011-10-17 → 2011-10-18 A (+1d) | 1d? → 2d |  |  |
| 63 | **Configuração & Mudança** |  | 2011-10-17 → 2011-10-24 A (+7d) | 1d → 6d |  |  |
| 67 | **Construção 1** |  | 2011-11-07 A |  | 14% → 100% |  |
| 68 | Gerenciamento do Projeto |  | 2011-11-07 A |  | 5% → 100% |  |
| 70 | Implementação |  | 2011-11-04 A |  | 10% → 100% |  |
| 71 | Teste |  | 2011-11-07 A |  | 25% → 100% |  |
| 73 | **Construção 2** | 2011-11-07 A | 2011-11-21 → 2011-11-14 A (-7d) | 11d → 6d | 0% → 100% |  |
| 74 | **Gerenciamento do Projeto** | 2011-11-07 → 2011-11-08 A (+1d) | 2011-11-07 → 2011-11-13 A (+6d) | 1d? → 4d | 0% → 100% |  |
| 77 | Requisitos | 2011-11-07 A | 2011-11-07 A |  | 0% → 100% |  |
| 78 | **Implementação** | 2011-11-07 → 2011-11-08 A (+1d) | 2011-11-07 → 2011-11-14 A (+7d) | 1d? → 5d | 0% → 100% |  |
| 81 | **Teste** | 2011-11-07 → 2011-11-12 A (+5d) | 2011-11-07 → 2011-11-14 A (+7d) | 1d? → 1d | 0% → 100% |  |
| 84 | Configuração e Mudança | 2011-11-07 → 2011-11-12 A (+5d) | 2011-11-07 → 2011-11-14 A (+7d) | 1d → 2d | 0% → 100% | was named Configuração & Mudança; resources none → Guilherme Fay; Jose Guimarães |
